# Proyecto BP SOA v2

Schedule from MS Project, 2019-08-16 to 2019-12-31.

## Calendars

- Estándar: Mon-Fri 09:00-13:00, 15:00-19:00; Sat-Sun off.

## Resources

| Resource |
| --- |
| Giavanny |
| Giovanny |
| Renato |
| Banco |

## Schedule

| ID | WBS | Task | Type | Duration | Start | Finish | Predecessors | Total slack | Free slack | Resources | Work |
| --- | --- | --- | --- | --- | --- | --- | --- | --- | --- | --- | --- |
| 1 | 1 | **Ajuste esquema integraciones** |  | 20d | 2019-08-16 | 2019-09-12 |  | 19d | 0d |  | 160h |
| 2 | 1.1 | Finalizar contrucción del documento de integraciones |  | 14d | 2019-08-16 | 2019-09-04 |  | 19d | 0d | Renato | 112h |
| 3 | 1.2 | Entrega del documento | milestone | 0d | 2019-09-04 | 2019-09-04 | 2 | 19d | 0d | Renato |  |
| 4 | 1.3 | Revisión del documento de integraciones |  | 5d | 2019-09-05 | 2019-09-11 | 3 | 19d | 0d | Banco | 40h |
| 5 | 1.4 | Aceptación Entregable #1 Documento de integraciones |  | 1d | 2019-09-12 | 2019-09-12 | 4 | 19d |  | Banco | 8h |
| 6 | 2 | **Gobierno SOA** |  | 26d | 2019-08-16 | 2019-09-20 |  | 0d |  |  | 208h |
| 7 | 2.1 | Investigar buenas prácticas |  | 10d | 2019-08-16 | 2019-08-29 |  | 0d |  | Giovanny | 80h |
| 8 | 2.2 | Crear documento de gobernanza |  | 10d | 2019-08-30 | 2019-09-12 | 7 | 0d |  | Giovanny | 80h |
| 9 | 2.3 | Entrega del documento | milestone | 0d | 2019-09-12 | 2019-09-12 | 8 | 72d | 0d | Giovanny |  |
| 10 | 2.4 | Revisión del documento Gobierno SOA |  | 5d | 2019-09-13 | 2019-09-19 | 9 | 72d | 0d | Banco | 40h |
| 11 | 2.5 | Aceptación Entregable #2 Gobierno SOA |  | 1d | 2019-09-20 | 2019-09-20 | 10 | 72d |  | Banco | 8h |
| 12 | 3 | **Sistema SAGA** |  | 53d | 2019-09-13 | 2019-11-26 |  | 0d |  |  | 784h |
| 13 | 3.1 | **Revisión de arquitectura** |  | 39d | 2019-09-13 | 2019-11-06 |  | 0d |  |  | 448h |
| 14 | 3.1.1 | Afiliaciones |  | 8d | 2019-09-13 | 2019-09-24 | 8 | 0d |  | Giovanny | 64h |
| 15 | 3.1.2 | Pago salarios |  | 9d | 2019-09-25 | 2019-10-07 | 14 | 0d |  | Giovanny | 72h |
| 16 | 3.1.3 | Tarjetas |  | 9d | 2019-09-13 | 2019-09-25 | 1 | 19d | 0d | Renato | 72h |
| 17 | 3.1.4 | Notificaciones |  | 5d | 2019-09-26 | 2019-10-02 | 16 | 19d | 0d | Renato | 40h |
| 18 | 3.1.5 | Tarjeta crédito |  | 3d | 2019-10-03 | 2019-10-07 | 17 | 19d | 0d | Renato | 24h |
| 19 | 3.1.6 | Préstamos IBAN |  | 6d | 2019-10-08 | 2019-10-15 | 18 | 19d | 0d | Renato | 48h |
| 20 | 3.1.7 | Otros componentes |  | 5d | 2019-10-16 | 2019-10-22 | 19 | 19d | 0d | Renato | 40h |
| 21 | 3.1.8 | Componentes futuros |  | 5d | 2019-10-23 | 2019-10-29 | 20 | 19d | 0d | Renato | 40h |
| 22 | 3.1.9 | Entrega del documento | milestone | 0d | 2019-10-29 | 2019-10-29 | 21 | 39d | 0d | Renato |  |
| 23 | 3.1.10 | Revisión del documento Arquitectura SAGA |  | 5d | 2019-10-30 | 2019-11-05 | 22 | 39d | 0d | Banco | 40h |
| 24 | 3.1.11 | Aceptación Entregable #3 Arquitectra SAGA |  | 1d | 2019-11-06 | 2019-11-06 | 23 | 39d |  | Banco | 8h |

| ID | WBS | Task | Type | Duration | Start | Finish | Predecessors | Total slack | Free slack | Resources | Work |
| --- | --- | --- | --- | --- | --- | --- | --- | --- | --- | --- | --- |
| 25 | 3.2 | **Pruebas de estrés en ambiente desarrollo** |  | 36d | 2019-10-08 | 2019-11-26 |  | 0d |  |  | 336h |
| 26 | 3.2.1 | Diseño y matriz de pruebas de estrés |  | 10d | 2019-10-08 | 2019-10-21 | 15 | 0d |  | Giovanny | 80h |
| 27 | 3.2.2 | Entrega del documento | milestone | 0d | 2019-10-21 | 2019-10-21 | 26 | 45d | 0d | Giovanny |  |
| 28 | 3.2.3 | Revisión del documento matriz de pruebas |  | 5d | 2019-10-22 | 2019-10-28 | 27 | 45d | 0d | Banco | 40h |
| 29 | 3.2.4 | Aceptación del documento matriz de pruebas |  | 1d | 2019-10-29 | 2019-10-29 | 28 | 45d |  | Banco | 8h |
| 30 | 3.2.5 | Pruebas Afiliaciones |  | 4d | 2019-10-22 | 2019-10-25 | 26 | 0d |  | Giovanny | 32h |
| 31 | 3.2.6 | Pruebas Pago salarios |  | 4d | 2019-10-28 | 2019-10-31 | 30 | 0d |  | Giovanny | 32h |
| 32 | 3.2.7 | Pruebas Tarjetas |  | 4d | 2019-11-01 | 2019-11-06 | 31 | 0d |  | Giovanny | 32h |
| 33 | 3.2.8 | Pruebas Notificaciones |  | 4d | 2019-11-07 | 2019-11-12 | 32 | 0d |  | Giovanny | 32h |
| 34 | 3.2.9 | Pruebas Tarjeta crédito |  | 4d | 2019-11-13 | 2019-11-18 | 33 | 0d |  | Giovanny | 32h |
| 35 | 3.2.10 | Entrega del documento | milestone | 0d | 2019-11-18 | 2019-11-18 | 34 | 25d | 0d | Banco |  |
| 36 | 3.2.11 | Revisión del documento Resultado de pruebas |  | 5d | 2019-11-19 | 2019-11-25 | 35 | 25d | 0d | Banco | 40h |
| 37 | 3.2.12 | Aceptación Entregable #4 pruebas estrés |  | 1d | 2019-11-26 | 2019-11-26 | 36 | 25d |  | Banco | 8h |
| 38 | 4 | **SIPO Arquitectura de aplicaciones** |  | 26d | 2019-10-30 | 2019-12-04 |  | 19d |  |  | 208h |
| 39 | 4.1 | SIPO contra el resto de aplicaciones |  | 20d | 2019-10-30 | 2019-11-26 | 21 | 19d | 0d | Renato | 160h |
| 40 | 4.2 | Entrega del documento | milestone | 0d | 2019-11-26 | 2019-11-26 | 39 | 19d | 0d | Renato |  |
| 41 | 4.3 | Revisión del documento SIPO arquitectura |  | 5d | 2019-11-27 | 2019-12-03 | 40 | 19d | 0d | Banco | 40h |
| 42 | 4.4 | Aceptación Entregable #5 SIPO arquitectura |  | 1d | 2019-12-04 | 2019-12-04 | 41 | 19d |  | Banco | 8h |
| 43 | 5 | **Laboratorio en Infraestructura Desarrollo** |  | 31d | 2019-11-19 | 2019-12-31 |  | 0d |  |  | 248h |
| 44 | 5.1 | Instalación de los componentes desarrollo |  | 2d | 2019-11-19 | 2019-11-20 | 34 | 0d |  | Giovanny | 16h |
| 45 | 5.2 | Conexión del servidor al Banco |  | 2d | 2019-11-21 | 2019-11-22 | 44 | 0d |  | Giovanny | 16h |
| 46 | 5.3 | Configuración del servidor en la red del banco |  | 1d | 2019-11-25 | 2019-11-25 | 45 | 0d |  | Giovanny | 8h |
| 47 | 5.4 | Inicio de creación de servicios de interconexión de SIPO |  | 20d | 2019-11-26 | 2019-12-23 | 46 | 0d |  | Giovanny | 160h |
| 48 | 5.5 | Entrega del documento de resultado del laboratorio de pruebas | milestone | 0d | 2019-12-23 | 2019-12-23 | 47 | 0d |  | Giovanny |  |
| 49 | 5.6 | Revisión del documento del resultado del laboratorio de pruebas |  | 5d | 2019-12-24 | 2019-12-30 | 48 | 0d |  | Banco | 40h |
| 50 | 5.7 | Aceptación Entregable #6 SIPO Resultado del laboratorio |  | 1d | 2019-12-31 | 2019-12-31 | 49 | 0d |  | Banco | 8h |
