# Proyecto SOA Banco Popular

Schedule from MS Project, 2019-08-20 to 2020-01-21.

## Calendars

- Estándar: Mon-Fri 09:00-13:00, 15:00-19:00; Sat-Sun off.

## Resources

| Resource |
| --- |
| Giavanny |
| Giovanny |
| Renato |
| Banco |

## Schedule

| ID | WBS | Task | Type | Duration | Start | Finish | Predecessors | Total slack | Free slack | Resources | Work |
| --- | --- | --- | --- | --- | --- | --- | --- | --- | --- | --- | --- |
| 1 | 1 | **PAQUETE 1** |  | 40d | 2019-08-20 | 2019-10-14 |  | 31d |  |  | 368h |
| 2 | 1.1 | **Ajuste esquema integraciones** |  | 20d | 2019-08-20 | 2019-09-16 |  | 31d |  |  | 160h |
| 3 | 1.1.1 | Contrucción del documento de integraciones |  | 14d | 2019-08-20 | 2019-09-06 |  | 31d | 0d | Renato | 112h |
| 4 | 1.1.2 | Entrega del documento | milestone | 0d | 2019-09-06 | 2019-09-06 | 3 | 31d | 0d | Renato |  |
| 5 | 1.1.3 | Revisión del documento de integraciones |  | 5d | 2019-09-09 | 2019-09-13 | 4 | 91d | 0d | Banco | 40h |
| 6 | 1.1.4 | Aceptación Entregable #1 Documento de integraciones |  | 1d | 2019-09-16 | 2019-09-16 | 5 | 91d |  | Banco | 8h |
| 7 | 1.2 | **SIPO Arquitectura de aplicaciones** |  | 26d | 2019-09-09 | 2019-10-14 |  | 31d |  |  | 208h |
| 8 | 1.2.1 | SIPO contra el resto de aplicaciones |  | 20d | 2019-09-09 | 2019-10-04 | 4 | 31d | 0d | Renato | 160h |
| 9 | 1.2.2 | Entrega del documento | milestone | 0d | 2019-10-04 | 2019-10-04 | 8 | 31d | 0d | Renato |  |
| 10 | 1.2.3 | Revisión del documento SIPO arquitectura |  | 5d | 2019-10-07 | 2019-10-11 | 9 | 71d | 0d | Banco | 40h |
| 11 | 1.2.4 | Aceptación Entregable #2 SIPO arquitectura |  | 1d | 2019-10-14 | 2019-10-14 | 10 | 71d |  | Banco | 8h |
| 12 | 2 | **PAQUETE 2** |  | 86d | 2019-08-20 | 2019-12-17 |  | 0d |  |  | 992h |
| 13 | 2.1 | **Revisión de Arquitectura y Pruebas de Estrés SAGA** |  | 86d | 2019-08-20 | 2019-12-17 |  | 0d |  |  | 992h |
| 14 | 2.1.1 | Validación de la arquitectura SAGA |  | 26d | 2019-11-04 | 2019-12-09 | 44 | 31d |  | Renato | 208h |
| 15 | 2.1.2 | **Revisión de arquitectura** |  | 56d | 2019-08-20 | 2019-11-05 |  | 0d |  |  | 448h |
| 16 | 2.1.2.1 | Afiliaciones |  | 8d | 2019-08-20 | 2019-08-29 |  | 0d |  | Giovanny | 64h |
| 17 | 2.1.2.2 | Pago salarios |  | 9d | 2019-08-30 | 2019-09-11 | 16 | 0d |  | Giovanny | 72h |
| 18 | 2.1.2.3 | Tarjetas |  | 9d | 2019-09-12 | 2019-09-24 | 17 | 0d |  | Giovanny | 72h |
| 19 | 2.1.2.4 | Notificaciones |  | 5d | 2019-09-25 | 2019-10-01 | 18 | 0d |  | Giovanny | 40h |
| 20 | 2.1.2.5 | Tarjeta crédito |  | 3d | 2019-10-02 | 2019-10-04 | 19 | 0d |  | Giovanny | 24h |
| 21 | 2.1.2.6 | Préstamos IBAN |  | 6d | 2019-10-07 | 2019-10-14 | 20 | 0d |  | Giovanny | 48h |
| 22 | 2.1.2.7 | Otros componentes |  | 5d | 2019-10-15 | 2019-10-21 | 21 | 0d |  | Giovanny | 40h |
| 23 | 2.1.2.8 | Componentes futuros |  | 5d | 2019-10-22 | 2019-10-28 | 22 | 0d |  | Giovanny | 40h |
| 24 | 2.1.2.9 | Entrega del documento | milestone | 0d | 2019-10-28 | 2019-10-28 | 23 | 0d |  | Giovanny |  |
| 25 | 2.1.2.10 | Revisión del documento Arquitectura SAGA |  | 5d | 2019-10-29 | 2019-11-04 | 24 | 55d | 0d | Banco | 40h |
| 26 | 2.1.2.11 | Aceptación Entregable #3 Arquitectra SAGA |  | 1d | 2019-11-05 | 2019-11-05 | 25 | 55d |  | Banco | 8h |

| ID | WBS | Task | Type | Duration | Start | Finish | Predecessors | Total slack | Free slack | Resources | Work |
| --- | --- | --- | --- | --- | --- | --- | --- | --- | --- | --- | --- |
| 27 | 2.1.3 | **Pruebas de estrés en ambiente desarrollo** |  | 36d | 2019-10-29 | 2019-12-17 |  | 0d |  |  | 336h |
| 28 | 2.1.3.1 | Diseño y matriz de pruebas de estrés |  | 10d | 2019-10-29 | 2019-11-11 | 24 | 0d |  | Giovanny | 80h |
| 29 | 2.1.3.2 | Entrega del documento | milestone | 0d | 2019-11-11 | 2019-11-11 | 28 | 0d |  | Giovanny |  |
| 30 | 2.1.3.3 | Revisión del documento matriz de pruebas |  | 5d | 2019-11-12 | 2019-11-18 | 29 | 45d | 0d | Banco | 40h |
| 31 | 2.1.3.4 | Aceptación del documento matriz de pruebas |  | 1d | 2019-11-19 | 2019-11-19 | 30 | 45d |  | Banco | 8h |
| 32 | 2.1.3.5 | Pruebas Afiliaciones |  | 4d | 2019-11-12 | 2019-11-15 | 29 | 0d |  | Giovanny | 32h |
| 33 | 2.1.3.6 | Pruebas Pago salarios |  | 4d | 2019-11-18 | 2019-11-21 | 32 | 0d |  | Giovanny | 32h |
| 34 | 2.1.3.7 | Pruebas Tarjetas |  | 4d | 2019-11-22 | 2019-11-27 | 33 | 0d |  | Giovanny | 32h |
| 35 | 2.1.3.8 | Pruebas Notificaciones |  | 4d | 2019-11-28 | 2019-12-03 | 34 | 0d |  | Giovanny | 32h |
| 36 | 2.1.3.9 | Pruebas Tarjeta crédito |  | 4d | 2019-12-04 | 2019-12-09 | 35 | 0d |  | Giovanny | 32h |
| 37 | 2.1.3.10 | Entrega del documento | milestone | 0d | 2019-12-09 | 2019-12-09 | 36 | 0d |  | Banco |  |
| 38 | 2.1.3.11 | Revisión del documento Resultado de pruebas |  | 5d | 2019-12-10 | 2019-12-16 | 37 | 25d | 0d | Banco | 40h |
| 39 | 2.1.3.12 | Aceptación Entregable #4 pruebas estrés |  | 1d | 2019-12-17 | 2019-12-17 | 38 | 25d |  | Banco | 8h |
| 40 | 3 | **PAQUETE 3** |  | 77d | 2019-10-07 | 2020-01-21 |  | 0d |  |  | 656h |
| 41 | 3.1 | **Gobierno SOA** |  | 26d | 2019-10-07 | 2019-11-11 |  | 31d |  |  | 208h |
| 42 | 3.1.1 | Investigar buenas prácticas |  | 10d | 2019-10-07 | 2019-10-18 | 9 | 31d | 0d | Renato | 80h |
| 43 | 3.1.2 | Crear documento de gobernanza |  | 10d | 2019-10-21 | 2019-11-01 | 42 | 31d | 0d | Renato | 80h |
| 44 | 3.1.3 | Entrega del documento | milestone | 0d | 2019-11-01 | 2019-11-01 | 43 | 31d | 0d | Renato |  |
| 45 | 3.1.4 | Revisión del documento Gobierno SOA |  | 5d | 2019-11-04 | 2019-11-08 | 44 | 51d | 0d | Banco | 40h |
| 46 | 3.1.5 | Aceptación Entregable #2 Gobierno SOA |  | 1d | 2019-11-11 | 2019-11-11 | 45 | 51d |  | Banco | 8h |
| 47 | 3.2 | **Laboratorio en Infraestructura Desarrollo** |  | 31d | 2019-12-10 | 2020-01-21 |  | 0d |  |  | 448h |
| 48 | 3.2.1 | Validación de la arquitectura SOA |  | 25d | 2019-12-10 | 2020-01-13 | 37SS | 6d |  | Renato | 200h |
| 49 | 3.2.2 | Instalación de los componentes desarrollo |  | 2d | 2019-12-10 | 2019-12-11 | 37 | 0d |  | Giovanny | 16h |
| 50 | 3.2.3 | Conexión del servidor al Banco |  | 2d | 2019-12-12 | 2019-12-13 | 49 | 0d |  | Giovanny | 16h |
| 51 | 3.2.4 | Configuración del servidor en la red del banco |  | 1d | 2019-12-16 | 2019-12-16 | 50 | 0d |  | Giovanny | 8h |
| 52 | 3.2.5 | Inicio de creación de servicios de interconexión de SIPO |  | 20d | 2019-12-17 | 2020-01-13 | 51 | 0d |  | Giovanny | 160h |
| 53 | 3.2.6 | Entrega del documento de resultado del laboratorio de pruebas | milestone | 0d | 2020-01-13 | 2020-01-13 | 52 | 0d |  | Giovanny |  |
| 54 | 3.2.7 | Revisión del documento del resultado del laboratorio de pruebas |  | 5d | 2020-01-14 | 2020-01-20 | 53 | 0d |  | Banco | 40h |
| 55 | 3.2.8 | Aceptación Entregable #6 SIPO Resultado del laboratorio |  | 1d | 2020-01-21 | 2020-01-21 | 54 | 0d |  | Banco | 8h |
