# GOBIERNO SOA

Schedule from MS Project, 2019-09-02 to 2020-03-25, status date 2019-10-18, A marks actual dates.

## Calendars

- Standard: Mon-Fri 08:00-12:00, 13:00-17:00; Sat-Sun off.

## Resources

| Resource |
| --- |
| Renato |

## Schedule

| ID | WBS | Task | Type | Duration | Start | Finish | Predecessors | Complete | Remaining | Baseline start | Baseline finish | Baseline duration | Total slack | Constraint | Resources | Work | Actual work |
| --- | --- | --- | --- | --- | --- | --- | --- | --- | --- | --- | --- | --- | --- | --- | --- | --- | --- |
| 1 | 1 | **Patrón y diseño de contrato SOA - Adelanto** |  | 9d | 2019-09-02 A | 2019-09-12 A |  | 100% |  |  |  |  |  |  |  | 72h | 72h |
| 2 | 1.1 | 003 La anotomía del contrato del WS |  | 3d | 2019-09-02 A | 2019-09-04 A |  | 100% |  | 2019-09-09 | 2019-09-11 | 3d |  | start no earlier than 2019-09-02 | Renato | 24h | 24h |
| 3 | 1.2 | 002 Principio de Diseño Contratos de Servicio |  | 3d | 2019-09-05 A | 2019-09-09 A | 2 | 100% |  | 2019-09-04 | 2019-09-06 | 3d |  |  | Renato | 24h | 24h |
| 4 | 1.3 | 001 Patrón del diseño del contrato de servicios |  | 3d | 2019-09-10 A | 2019-09-12 A | 3 | 100% |  | 2019-09-02 | 2019-09-03 | 2d |  | start no earlier than 2019-09-02 | Renato | 24h | 24h |
| 5 | 2 | **Definición de etapas de proyecto SOA** |  | 9d | 2019-09-13 A | 2019-09-25 A |  | 100% |  | 2019-09-12 | 2019-09-18 | 5d |  |  |  | 40h | 40h |
| 6 | 2.1 | Definir etapas fundamentales del ciclo de vida del proyecto SOA |  | 1d | 2019-09-13 A | 2019-09-13 A | 4 | 100% |  | 2019-09-12 | 2019-09-12 | 1d |  |  | Renato | 8h | 8h |
| 7 | 2.2 | La descripción de cada una de esas etapas y sus acciones principales |  | 1d | 2019-09-16 A | 2019-09-16 A | 6 | 100% |  | 2019-09-13 | 2019-09-13 | 1d |  |  | Renato | 8h | 8h |
| 8 | 2.3 | Las acciones de gobierno SOA a ser ejecutadas durante la etapa de Análisis de Servicios |  | 3d | 2019-09-23 A | 2019-09-25 A | 11 | 100% |  | 2019-09-16 | 2019-09-18 | 3d |  |  | Renato | 24h | 24h |
| 9 | 2.4 | Entregable - Documento - matriz con la definición de etapas y acciones por cada una | milestone | 0d | 2019-09-25 A | 2019-09-25 A | 8 | 100% |  |  |  |  |  |  | Renato |  |  |
| 10 | 3 | **Patrones de Diseño SOA** |  | 19d | 2019-09-17 A | 2019-10-11 A |  | 100% |  | 2019-09-19 | 2019-09-30 | 8d |  |  |  | 64h | 64h |
| 11 | 3.1 | Se describirá el patrón de diseño SOA que se aplicará en el Banco Popular |  | 4d | 2019-09-17 A | 2019-09-20 A | 7 | 100% |  | 2019-09-19 | 2019-09-20 | 2d |  |  | Renato [50%] | 16h | 16h |
| 12 | 3.2 | Patrón de centralización del inventario de servicios |  | 6d | 2019-09-26 A | 2019-10-03 A | 8 | 100% |  | 2019-09-23 | 2019-09-25 | 3d |  | start no earlier than 2019-09-11 | Renato [50%] | 24h | 24h |
| 13 | 3.3 | 001 Patrón del diseño del contrato de servicios | milestone | 0d | 2019-10-03 A | 2019-10-03 A | 12 | 100% |  | 2019-09-25 | 2019-09-25 | 0d |  |  | Renato [50%] |  |  |
| 14 | 3.4 | Patrón de la capacidad de composición del servicio. |  | 6d | 2019-10-04 A | 2019-10-11 A | 12 | 100% |  | 2019-09-26 | 2019-09-30 | 3d |  |  | Renato [50%] | 24h | 24h |
| 15 | 3.5 | Entregable - Documento de patrones de diseño SOA | milestone | 0d | 2019-10-11 A | 2019-10-11 A | 14 | 100% |  |  |  |  |  |  | Renato [50%] |  |  |
| 16 | 4 | **Principios de Diseño** |  | 4d | 2019-10-11 A | 2019-10-17 A |  | 100% |  | 2019-09-30 | 2019-10-02 | 2d |  |  |  | 16h | 16h |
| 17 | 4.1 | 002 Contratos de Servicio | milestone | 0d | 2019-10-11 A | 2019-10-11 A | 10 | 100% |  | 2019-09-30 | 2019-09-30 | 0d |  |  | Renato [50%] |  |  |
| 18 | 4.2 | Acoplamiento de Servicio |  | 4d | 2019-10-14 A | 2019-10-17 A | 17 | 100% |  | 2019-10-01 | 2019-10-02 | 2d |  |  | Renato [50%] | 16h | 16h |
| 19 | 4.3 | Entregable - Documento de principios de diseño | milestone | 0d | 2019-10-17 A | 2019-10-17 A | 18 | 100% |  |  |  |  |  |  | Renato [50%] |  |  |
| 20 | 5 | **Establecimiento de Estándares** |  | 4d | 2019-10-17 A | 2019-10-23 |  | 25% | 3d | 2019-10-02 | 2019-10-04 | 2d | 0d |  |  | 16h | 4h |
| 21 | 5.1 | 003 La anotomía del contrato del WS | milestone | 0d | 2019-10-17 A | 2019-10-17 A | 16 | 100% |  | 2019-10-02 | 2019-10-02 | 0d |  |  | Renato [50%] |  |  |
| 22 | 5.2 | La guía para los Namespaces |  | 4d | 2019-10-18 A | 2019-10-23 | 21 | 25% | 3d | 2019-10-03 | 2019-10-04 | 2d | 0d |  | Renato [50%] | 16h | 4h |
| 23 | 5.3 | Entregable - Documento establecimiento de estándares | milestone | 0d | 2019-10-23 | 2019-10-23 | 22 |  |  |  |  |  | 0d |  | Renato [50%] |  |  |
| 24 | 6 | **Inventario de Servicios** |  | 50d | 2019-10-24 | 2020-01-01 |  |  |  | 2019-10-07 | 2019-11-08 | 25d | 0d |  |  | 200h |  |
| 25 | 6.1 | Se debe definir del inventario actual a cuáles servicios se le realiza el perfil del Servicio recomendamos SAGA, SIPO o t24. |  | 10d | 2019-10-24 | 2019-11-06 | 20 |  |  | 2019-10-07 | 2019-10-11 | 5d | 0d |  | Renato [50%] | 40h |  |
| 26 | 6.2 | A los servicios previamente seleccionados se les realizara la ficha del Perfil del Servicio. |  | 40d | 2019-11-07 | 2020-01-01 | 25 |  |  | 2019-10-14 | 2019-11-08 | 20d | 0d |  | Renato [50%] | 160h |  |
| 27 | 6.3 | Entregable - Documento inventario de servicios y la ficha de perfil de cada uno según se haya elegido para un sistema | milestone | 0d | 2020-01-01 | 2020-01-01 | 26 |  |  |  |  |  | 0d |  | Renato [50%] |  |  |

| ID | WBS | Task | Type | Duration | Start | Finish | Predecessors | Baseline start | Baseline finish | Baseline duration | Total slack | Resources | Work |
| --- | --- | --- | --- | --- | --- | --- | --- | --- | --- | --- | --- | --- | --- |
| 28 | 7 | **SOA GOVERNANCE PROGRAM OFFICE (SGPO)** |  | 60d | 2020-01-02 | 2020-03-25 |  | 2019-11-11 | 2019-12-20 | 30d | 0d |  | 240h |
| 29 | 7.1 | Desde el punto de vista de gobernanza la Creación de la matriz de roles y responsabilidades a lo largo de todas las etapas del proyecto SOA. |  | 30d | 2020-01-02 | 2020-02-12 | 24 | 2019-11-11 | 2019-11-29 | 15d | 0d | Renato [50%] | 120h |
| 30 | 7.2 | Un mapeo entre los roles organizacionales y la governanza SOA sus preceptos y procesos. |  | 30d | 2020-02-13 | 2020-03-25 | 29 | 2019-12-02 | 2019-12-20 | 15d | 0d | Renato [50%] | 120h |
| 31 | 7.3 | Entregable - Documento - matriz de roles - responsabilidades y mapeo de roles - gobernanza | milestone | 0d | 2020-03-25 | 2020-03-25 | 30 |  |  |  | 0d | Renato [50%] |  |
